# Simple Project Plan

Schedule from MS Project, 2023-03-22 to 2023-06-23, costs in zł, A marks actual dates.
DT

## Calendars

- Standardowy: Mon-Fri 08:00-16:00; Sat-Sun off.

## Resources

| Resource | Rate | Cost per use |
| --- | --- | --- |
| Risk Analyst | 70 |  |
| Test Manager | 80 |  |
| Project Manager | 160 | 170 |
| Risk Manager | 70 | 80 |
| QA Manager | 90 | 90 |
| Configuration Manager | 120 | 80 |
| Change Manager | 100 | 80 |
| Business analyst | 90 | 45 |
| System Analyst | 80 | 50 |
| Developer | 75 | 70 |
| Database developer | 80 | 70 |
| Test Engineer | 77 | 60 |
| Instalation engineer | 55 | 60 |
| System Architect | 85 | 45 |
| Test Designer | 20 | 50 |

## Schedule

| ID | WBS | Task | Duration | Start | Finish | Predecessors | Complete | Remaining | Actual start | Total slack | Free slack | Constraint | Resources | Work | Actual work | Cost | Actual cost |
| --- | --- | --- | --- | --- | --- | --- | --- | --- | --- | --- | --- | --- | --- | --- | --- | --- | --- |
| 1 | 1 | **Zarządzanie projektem** | 67d | 2023-03-22 A | 2023-06-23 |  | 79% | 14.36d |  | 0d |  |  |  | 672h | 540h | 67,759 | 55,731 |
| 2 | 1.1 | Sporządzenie planu projektu | 3d | 2023-03-22 A | 2023-03-27 A |  | 100% |  |  |  |  | start no earlier than 2023-03-22 | Project Manager | 24h | 24h | 4,010 | 4,010 |
| 3 | 1.2 | Sporządzenie harmonogramu projektu | 2d | 2023-03-27 A | 2023-03-29 A | 2 | 100% |  |  |  |  |  | Project Manager | 16h | 16h | 2,730 | 2,730 |
| 4 | 1.3 | Sporządzenie kosztorysu projektu | 2d | 2023-03-29 A | 2023-03-31 A | 3 | 100% |  |  |  |  |  | Project Manager | 16h | 16h | 2,730 | 2,730 |
| 5 | 1.4 | Akceptacja planu projektu | 1d | 2023-03-29 A | 2023-03-31 | 4 | 50% | 0.5d |  | -2.5d | 0d |  | Project Manager | 8h | 4h | 1,450 | 810 |
| 6 | 1.5 | **Zarządzanie ryzykiem w projekcie** | 3d | 2023-03-31 | 2023-04-05 | 5 | 96% | 0.12d | 2023-03-29 |  |  |  |  | 25h | 24h | 1,910 | 1,840 |
| 7 | 1.5.1 | Sporządzenie planu zarządzania ryzykiem | 2d | 2023-03-29 A | 2023-04-03 A | 5 | 100% |  |  |  |  |  | Risk Manager | 16h | 16h | 1,200 | 1,200 |
| 8 | 1.5.2 | Sporządzenie raportu zarządzania ryzykiem | 0.88d | 2023-04-04 A | 2023-04-04 | 7 | 86% | 0.12d |  | 57.12d |  | finish no earlier than 2023-04-04 | Risk Analyst | 7h | 6h | 490 | 420 |
| 9 | 1.5.3 | Akceptacja | 0.25d | 2023-04-04 A | 2023-04-04 A | 8 | 100% |  |  |  |  | finish no earlier than 2023-04-04 | Risk Manager | 2h | 2h | 220 | 220 |
| 10 | 1.6 | **Zarządzenie jakością w projekcie** | 5.88d | 2023-04-05 A | 2023-04-12 | 9 | 85% | 0.88d |  | 0d |  |  |  | 47h | 40h | 4,590 | 3,960 |
| 11 | 1.6.1 | Sporządzenie planu zarządzania jakością | 2d | 2023-04-05 A | 2023-04-07 A | 9 | 100% |  |  |  |  | finish no earlier than 2023-03-23 | QA Manager | 16h | 16h | 1,530 | 1,530 |
| 12 | 1.6.2 | Sporządzenie planu zapewnienia jakości | 1d | 2023-04-07 A | 2023-04-10 A | 11 | 100% |  |  |  |  | finish no earlier than 2023-03-28 | QA Manager | 8h | 8h | 810 | 810 |
| 13 | 1.6.3 | Sporządzenie arkuszy kontrolnych | 2d | 2023-04-10 A | 2023-04-12 | 12 | 88% | 0.25d |  | 0.25d | 0d | finish no earlier than 2023-04-11 | QA Manager | 16h | 14h | 1,530 | 1,350 |
| 14 | 1.6.4 | Akceptacja | 0.88d | 2023-04-12 A | 2023-04-12 | 13 | 29% | 0.62d |  | 0d |  | finish no earlier than 2023-04-12 | QA Manager | 7h | 2h | 720 | 270 |
| 15 | 1.7 | **Zarządzanie konfiguracją** | 6d | 2023-04-12 A | 2023-04-20 | 14 | 67% | 2d |  | 46d |  |  |  | 48h | 32h | 6,080 | 4,160 |
| 16 | 1.7.1 | Sporządzenie planu zarządzania konfiguracją | 1d | 2023-04-12 A | 2023-04-13 A | 14 | 100% |  |  |  |  | finish no earlier than 2023-03-31 | Configuration Manager | 8h | 8h | 1,040 | 1,040 |
| 17 | 1.7.2 | Stworzenie systemu zarządzania wersjami | 2d | 2023-04-13 A | 2023-04-17 | 16 | 50% | 1d |  | 1d | 0d | finish no earlier than 2023-04-06 | Configuration Manager | 16h | 8h | 2,000 | 1,040 |
| 18 | 1.7.3 | Stworzenie zbioru 'baseline' dla projektu | 2d | 2023-04-17 A | 2023-04-19 | 17 | 50% | 1d |  | 47d |  | finish no earlier than 2023-04-10 | Configuration Manager | 16h | 8h | 2,000 | 1,040 |
| 19 | 1.7.4 | Akceptacja | 1d | 2023-04-19 A | 2023-04-20 A | 18 | 100% |  |  |  |  | finish no earlier than 2023-04-10 | Configuration Manager | 8h | 8h | 1,040 | 1,040 |
| 20 | 1.8 | **Zarządzanie zmianami** | 3d | 2023-04-19 A | 2023-04-24 A | 15 | 100% |  |  |  |  |  |  | 24h | 24h | 2,640 | 2,640 |
| 21 | 1.8.1 | Sporządzenie planu zarządzania zmianami | 1d | 2023-04-19 A | 2023-04-20 A | 19 | 100% |  |  |  |  |  | Change Manager | 8h | 8h | 880 | 880 |
| 22 | 1.8.2 | Sporządzenie formularza żądania zmianami | 1d | 2023-04-20 A | 2023-04-21 A | 21 | 100% |  |  |  |  |  | Change Manager | 8h | 8h | 880 | 880 |
| 23 | 1.8.3 | Akceptacja | 1d | 2023-04-21 A | 2023-04-24 A | 22 | 100% |  |  |  |  |  | Change Manager | 8h | 8h | 880 | 880 |
| 24 | 1.9 | **Zarządzanie testami** | 4d | 2023-04-21 A | 2023-04-27 A | 20 | 100% |  |  |  |  |  |  | 32h | 32h | 2,560 | 2,560 |
| 25 | 1.9.1 | Sporządzenie planu zarządzania testami | 1d | 2023-04-21 A | 2023-04-24 A | 23 | 100% |  |  |  |  |  | Test Manager | 8h | 8h | 640 | 640 |
| 26 | 1.9.2 | Sporządzenie harmonogramu testów | 1d | 2023-04-24 A | 2023-04-25 A | 25 | 100% |  |  |  |  |  | Test Manager | 8h | 8h | 640 | 640 |
| 27 | 1.9.3 | Stworzenie bazy błędów | 1d | 2023-04-25 A | 2023-04-26 A | 26 | 100% |  |  |  |  |  | Test Manager | 8h | 8h | 640 | 640 |
| 28 | 1.9.4 | Akceptacja | 1d | 2023-04-26 A | 2023-04-27 A | 27 | 100% |  |  |  |  |  | Test Manager | 8h | 8h | 640 | 640 |

Notes:
- 1: To jest zadanie sumaryczne. Używaj zadań sumarycznych, aby łatwiej dzielić projekt na sekcje.
- 5: To jest zadanie punktu kontrolnego. Ustaw dla zadania czas trwania 0 dn, aby oznaczyć zdarzenie w projekcie.
- 11: Zadania, obok których widać pinezkę, to zadania zaplanowane ręcznie. Używaj ich, gdy nie chcesz, aby program Project przenosił zadanie. Ponadto możesz wprowadzić dowolny tekst w polach czasu trwania, rozpoczęcia i zakończenia lub pozostawić je puste, jeśli nie masz jeszcze wszystkich informacji.

| ID | WBS | Task | Duration | Start | Finish | Predecessors | Complete | Remaining | Total slack | Free slack | Constraint | Resources | Work | Actual work | Cost | Actual cost |
| --- | --- | --- | --- | --- | --- | --- | --- | --- | --- | --- | --- | --- | --- | --- | --- | --- |
| 29 | 1.10 | **Definiowanie i zbieranie wymagań** | 6d | 2023-04-26 A | 2023-05-04 | 24 | 83% | 1d | 0d |  |  |  | 48h | 40h | 4,545 | 3,825 |
| 30 | 1.10.1 | Sporządzenie specyfikacji wymagań funkcjonalnych | 2d | 2023-04-26 A | 2023-04-28 | 28 | 50% | 1d | 3d |  | finish no earlier than 2023-03-23 | Business analyst | 16h | 8h | 1,485 | 765 |
| 31 | 1.10.2 | Sporządzenie wymagań dotyczących jakości | 1d | 2023-04-28 A | 2023-05-01 A | 30 | 100% |  |  |  |  | Business analyst | 8h | 8h | 765 | 765 |
| 32 | 1.10.3 | Sporządzenie wymagań niefunkcjonalncyh i więzów | 1d | 2023-05-01 A | 2023-05-02 A | 31 | 100% |  |  |  | finish no earlier than 2023-03-28 | Business analyst | 8h | 8h | 765 | 765 |
| 33 | 1.10.4 | Sporządzenie umów | 1d | 2023-05-02 A | 2023-05-03 A | 32 | 100% |  |  |  |  | Business analyst | 8h | 8h | 765 | 765 |
| 34 | 1.10.5 | Akceptacja specyfikacji wymagan | 1d | 2023-05-03 A | 2023-05-04 A | 33 | 100% |  |  |  | finish no earlier than 2023-03-28 | Business analyst | 8h | 8h | 765 | 765 |
| 35 | 1.11 | **Analiza systemowa** | 11d | 2023-05-03 A | 2023-05-18 | 29 | 45% | 6d | 26d |  |  |  | 88h | 40h | 7,290 | 3,450 |
| 36 | 1.11.1 | Sporządzenie modelu use case'u | 3d | 2023-05-03 A | 2023-05-08 | 34 | 33% | 2d | 1d | 0d | finish no earlier than 2023-03-31 | System Analyst | 24h | 8h | 1,970 | 690 |
| 37 | 1.11.2 | Sporządzenie analizy specyfikacji wymagań | 3d | 2023-05-08 A | 2023-05-11 | 36 | 33% | 2d | 1d | 0d | finish no earlier than 2023-04-06 | System Analyst | 24h | 8h | 1,970 | 690 |
| 38 | 1.11.3 | Stworzenie statycznego modelu systemu | 2d | 2023-05-11 A | 2023-05-15 | 37 | 50% | 1d | 1d | 0d | finish no earlier than 2023-04-10 | System Analyst | 16h | 8h | 1,330 | 690 |
| 39 | 1.11.4 | Stworzenie dynamicznego modelu systemu | 2d | 2023-05-15 A | 2023-05-17 | 38 | 50% | 1d | 27d |  |  | System Analyst | 16h | 8h | 1,330 | 690 |
| 40 | 1.11.5 | Akceptacja | 1d | 2023-05-17 A | 2023-05-18 A | 39 | 100% |  |  |  | finish no earlier than 2023-04-10 | System Analyst | 8h | 8h | 690 | 690 |
| 41 | 1.12 | **Projektowanie systemu** | 4d | 2023-05-17 A | 2023-05-23 A | 35 | 100% |  |  |  |  |  | 32h | 32h | 3,110 | 3,110 |
| 42 | 1.12.1 | Stworzenie prototypu interfejsów użytkownika | 1d | 2023-05-17 A | 2023-05-18 A | 40 | 100% |  |  |  |  | System Architect | 8h | 8h | 725 | 725 |
| 43 | 1.12.2 | Sporządzenie specyfikacji interfejsów systemowych | 1d | 2023-05-18 A | 2023-05-19 A | 42 | 100% |  |  |  |  | System Architect | 8h | 8h | 725 | 725 |
| 44 | 1.12.3 | Przygotownaie testów | 1d | 2023-05-19 A | 2023-05-22 A | 43 | 100% |  |  |  |  | Test Designer | 8h | 8h | 210 | 210 |
| 45 | 1.12.4 | Akceptacja | 1d | 2023-05-22 A | 2023-05-23 A | 44 | 100% |  |  |  | finish no earlier than 2023-03-28 | Project Manager | 8h | 8h | 1,450 | 1,450 |
| 46 | 1.13 | **Implementacja i testy komponentów** | 8d | 2023-05-22 A | 2023-06-01 A | 41 | 100% |  |  |  |  |  | 128h | 128h | 11,226 | 11,226 |
| 47 | 1.13.1 | Pisanie kodu aplikacji | 5d | 2023-05-22 A | 2023-05-30 A | 45 | 100% |  |  |  | finish no earlier than 2023-03-31 | Database developer; Developer | 80h | 80h | 6,340 | 6,340 |
| 48 | 1.13.2 | Przygotowanie opisu wersji aplikacji | 1d | 2023-05-29 A | 2023-05-30 A | 47 | 100% |  |  |  | finish no earlier than 2023-04-06 | Database developer; Developer | 16h | 16h | 1,380 | 1,380 |
| 49 | 1.13.3 | Akceptacja opisu wersji | 1d | 2023-05-30 A | 2023-05-31 A | 48 | 100% |  |  |  |  | Project Manager | 8h | 8h | 1,450 | 1,450 |
| 50 | 1.13.4 | Stworzenie dokumentacji użytkownika | 1d | 2023-05-30 A | 2023-05-31 A | 49 | 100% |  |  |  | finish no earlier than 2023-04-10 | Database developer; Developer | 16h | 16h | 1,380 | 1,380 |
| 51 | 1.13.5 | Wykonanie unit testów | 1d | 2023-05-31 A | 2023-06-01 A | 50 | 100% |  |  |  | finish no earlier than 2023-04-10 | Test Engineer | 8h | 8h | 676 | 676 |
| 52 | 1.14 | **Testy** | 9d | 2023-06-01 A | 2023-06-14 | 46 | 67% | 3d | 0d |  |  |  | 72h | 48h | 5,868 | 4,020 |
| 53 | 1.14.1 | Stworzenie zbioru test case'ów | 2d | 2023-06-01 A | 2023-06-05 | 51 | 50% | 1d | 1d | 0d | finish no earlier than 2023-03-23 | Test Engineer | 16h | 8h | 1,292 | 676 |
| 54 | 1.14.2 | Przygotowanie środowiska testowego | 3d | 2023-06-05 A | 2023-06-08 | 53 | 33% | 2d | 3d |  | finish no earlier than 2023-03-28 | Test Engineer | 24h | 8h | 1,908 | 676 |
| 55 | 1.14.3 | Wykonanie pierwszego cyklu testów | 1d | 2023-06-08 A | 2023-06-09 A | 54 | 100% |  |  |  |  | Test Engineer | 8h | 8h | 676 | 676 |
| 56 | 1.14.4 | Wykonanie drugiego cyklu testów | 1d | 2023-06-09 A | 2023-06-12 A | 55 | 100% |  |  |  |  | Test Engineer | 8h | 8h | 676 | 676 |
| 57 | 1.14.5 | Sporządzneie raportu testów | 1d | 2023-06-12 A | 2023-06-13 A | 56 | 100% |  |  |  |  | Test Engineer | 8h | 8h | 676 | 676 |
| 58 | 1.14.6 | Akceptacja | 1d | 2023-06-13 A | 2023-06-14 A | 57 | 100% |  |  |  | finish no earlier than 2023-03-28 | Test Manager | 8h | 8h | 640 | 640 |

| ID | WBS | Task | Duration | Start | Finish | Predecessors | Complete | Remaining | Total slack | Free slack | Constraint | Resources | Work | Actual work | Cost | Actual cost |
| --- | --- | --- | --- | --- | --- | --- | --- | --- | --- | --- | --- | --- | --- | --- | --- | --- |
| 59 | 1.15 | **Wdrożenie systemu** | 8d | 2023-06-13 A | 2023-06-23 | 52 | 63% | 3d | 0d |  |  |  | 64h | 40h | 7,020 | 4,660 |
| 60 | 1.15.1 | Sporządzenie dokumentacji instalacyjnej w środowisku klienta | 3d | 2023-06-13 A | 2023-06-16 | 58 | 33% | 2d | 1d | 0d | finish no earlier than 2023-03-31 | Configuration Manager | 24h | 8h | 2,960 | 1,040 |
| 61 | 1.15.2 | Przygotowanie systemu klienta | 2d | 2023-06-16 A | 2023-06-20 | 60 | 50% | 1d | 3d |  | finish no earlier than 2023-04-06 | Instalation engineer | 16h | 8h | 940 | 500 |
| 62 | 1.15.3 | Sporządzenie planu testów użytkownika, test case'ów użytownika | 1d | 2023-06-20 A | 2023-06-21 A | 61 | 100% |  |  |  |  | Configuration Manager | 8h | 8h | 1,040 | 1,040 |
| 63 | 1.15.4 | Akceptacja raportu z instalacji w środowisku klienta | 1d | 2023-06-21 A | 2023-06-22 A | 62 | 100% |  |  |  | finish no earlier than 2023-04-10 | Configuration Manager | 8h | 8h | 1,040 | 1,040 |
| 64 | 1.15.5 | Sporządzenie raportu z testów akceptacyjnych | 1d | 2023-06-22 A | 2023-06-23 A | 63 | 100% |  |  |  | start no earlier than 2023-06-14 | Configuration Manager | 8h | 8h | 1,040 | 1,040 |
